# TrackIn - Cronograma de la Practica de Especialidad

Schedule from MS Project XML, 2026-08-03 to 2026-12-04, status date 2026-10-16.
Laboratorios Gutis Ltda.

## Calendars

- Estándar: Mon-Fri 08:00-12:00, 13:00-17:00; Sat-Sun off.

## Schedule

| ID | WBS | Task | Type | Duration | Start | Finish | Complete |
| --- | --- | --- | --- | --- | --- | --- | --- |
| 1 | 1 | **Práctica de Especialidad TrackIn** |  | 90d | 2026-08-03 | 2026-12-04 | 63% |
| 2 | 1.1 | **Semana de inducción** |  | 5d | 2026-08-03 | 2026-08-07 | 100% |
| 3 | 1.1.1 | Configuración del entorno de desarrollo y del repositorio | manual | 3d | 2026-08-03 | 2026-08-05 | 100% |
| 4 | 1.1.2 | Instalación de PostgreSQL 16 y PostGIS | manual | 2d | 2026-08-06 | 2026-08-07 | 100% |
| 5 | 1.1.3 | Minuta 01 con el profesor asesor | milestone, manual | 0d | 2026-08-07 | 2026-08-07 | 100% |
| 6 | 1.2 | **Sprint 1 · Requerimientos y viabilidad técnica** |  | 10d | 2026-08-10 | 2026-08-21 | 100% |
| 7 | 1.2.1 | SRS v0.1 | manual | 2d | 2026-08-10 | 2026-08-11 | 100% |
| 8 | 1.2.2 | Levantamiento de requerimientos con las áreas usuarias | manual | 3d | 2026-08-12 | 2026-08-14 | 100% |
| 9 | 1.2.3 | Minuta 02 con el profesor asesor y el supervisor | milestone, manual | 0d | 2026-08-14 | 2026-08-14 | 100% |
| 10 | 1.2.4 | SRS v0.2 | manual | 1d | 2026-08-14 | 2026-08-14 | 100% |
| 11 | 1.2.5 | Spike técnico TG-10 · AISStream | manual | 3d | 2026-08-17 | 2026-08-19 | 100% |
| 12 | 1.2.6 | Spike técnico TG-11 · OpenSky Network | manual | 2d | 2026-08-18 | 2026-08-19 | 100% |
| 13 | 1.2.7 | SRS v0.3 con los hallazgos de los spikes | manual | 1d | 2026-08-20 | 2026-08-20 | 100% |
| 14 | 1.2.8 | Product backlog priorizado (TG-18) | manual | 2d | 2026-08-20 | 2026-08-21 | 100% |
| 15 | 1.3 | **Sprint 2 · Análisis y diseño (OE1)** |  | 10d | 2026-08-24 | 2026-09-04 | 100% |
| 16 | 1.3.1 | Modelo de datos (TASK-12 a TASK-15) | manual | 2d | 2026-08-24 | 2026-08-25 | 100% |
| 17 | 1.3.2 | Diccionario de datos (TASK-16 a TASK-19, TASK-24, TASK-26) | manual | 2d | 2026-08-25 | 2026-08-26 | 100% |
| 18 | 1.3.3 | Arquitectura: componentes, despliegue y secuencia (TASK-20 a TASK-22) | manual | 2d | 2026-08-26 | 2026-08-27 | 100% |
| 19 | 1.3.4 | Wireframes y prototipo navegable en Figma (US-34 a US-38, US-41) | manual | 5d | 2026-08-27 | 2026-09-02 | 100% |
| 20 | 1.3.5 | Validación de prototipos con usuarios clave (US-39) | milestone, manual | 0d | 2026-09-02 | 2026-09-02 | 100% |
| 21 | 1.3.6 | SRS v0.4 (TASK-25) | manual | 2d | 2026-09-03 | 2026-09-04 | 100% |
| 22 | 1.4 | **Sprint 3 · Persistencia e ingesta (OE2 y OE4)** |  | 10d | 2026-09-07 | 2026-09-18 | 100% |
| 23 | 1.4.1 | Esquema, migraciones y PostGIS (TASK-01, TASK-02) | manual | 2d | 2026-09-07 | 2026-09-08 | 100% |
| 24 | 1.4.2 | Maestros de países y destinos (TASK-29, TASK-31) | manual | 1d | 2026-09-09 | 2026-09-09 | 100% |
| 25 | 1.4.3 | Contrato de referencia e ingesta semilla (TASK-30, TASK-03, US-01) | manual | 2d | 2026-09-10 | 2026-09-11 | 100% |
| 26 | 1.4.4 | Resiliencia, AIS e historial de posiciones (US-02, US-03, US-04) | manual | 3d | 2026-09-14 | 2026-09-16 | 100% |
| 27 | 1.4.5 | Spike de fuentes comerciales (TASK-28) | manual | 3d | 2026-09-14 | 2026-09-16 | 100% |
| 28 | 1.4.6 | Consolidación del Informe 1 (TASK-23) | manual | 2d | 2026-09-17 | 2026-09-18 | 100% |

| ID | WBS | Task | Type | Duration | Start | Finish | Complete |
| --- | --- | --- | --- | --- | --- | --- | --- |
| 29 | 1.5 | **Sprint 4 · Ingesta real, fuentes comerciales y motor de cálculo** |  | 10d | 2026-09-21 | 2026-10-02 | 100% |
| 30 | 1.5.1 | Carga y validación del archivo Z-tracking (US-31, US-32) | manual | 2d | 2026-09-21 | 2026-09-22 | 100% |
| 31 | 1.5.2 | Motor de cálculo: fecha proyectada, estado y arribo (US-09, US-10, US-11) | manual | 2d | 2026-09-22 | 2026-09-23 | 100% |
| 32 | 1.5.3 | Integración con ShipsGo marítimo y aéreo (US-45, US-46) | manual | 2d | 2026-09-23 | 2026-09-24 | 100% |
| 33 | 1.5.4 | Planificador, OpenSky y ETA estimada (US-07, US-05, US-06, US-08) | manual | 2d | 2026-09-24 | 2026-09-25 | 100% |
| 34 | 1.5.5 | Entrega del primer informe de avance | milestone, manual | 0d | 2026-09-25 | 2026-09-25 | 100% |
| 35 | 1.5.6 | Guías hijas por TICA (US-49) | manual | 1d | 2026-09-28 | 2026-09-28 | 100% |
| 36 | 1.5.7 | Reunión de seguimiento con el profesor asesor y la empresa | milestone, manual | 0d | 2026-09-28 | 2026-09-28 | 100% |
| 37 | 1.5.8 | Worker de rastreo y salud de las fuentes (US-50, US-51) | manual | 2d | 2026-09-29 | 2026-09-30 | 100% |
| 38 | 1.5.9 | Reunión con Compras y usuarios clave | milestone, manual | 0d | 2026-09-29 | 2026-09-29 | 100% |
| 39 | 1.5.10 | Puerto de llegada desde ShipsGo (US-52) y pruebas en vivo | manual | 2d | 2026-09-30 | 2026-10-01 | 100% |
| 40 | 1.5.11 | Revisión y cierre del Sprint 4 con el supervisor | milestone, manual | 0d | 2026-10-02 | 2026-10-02 | 100% |
| 41 | 1.6 | **Sprint 5 · Reglas de negocio, API y seguridad** |  | 10d | 2026-10-05 | 2026-10-16 | 100% |
| 42 | 1.6.1 | API REST de pedidos y documentación OpenAPI (US-16, TASK-04) | manual | 2d | 2026-10-05 | 2026-10-06 | 100% |
| 43 | 1.6.2 | Reunión con Compras: prototipo final, ShipsGo y MAWB | milestone, manual | 0d | 2026-10-06 | 2026-10-06 | 100% |
| 44 | 1.6.3 | Recálculo y configuración fuera del código (US-12, US-17) | manual | 2d | 2026-10-06 | 2026-10-07 | 100% |
| 45 | 1.6.4 | Reunión con el supervisor: no existirá API de SAP | milestone, manual | 0d | 2026-10-07 | 2026-10-07 | 100% |
| 46 | 1.6.5 | Fecha comprometida y puerto de llegada (US-53, US-54) | manual | 1d | 2026-10-07 | 2026-10-07 | 100% |
| 47 | 1.6.6 | Spike Parcels (TASK-32) y maestro de destinos (US-13) | manual | 2d | 2026-10-08 | 2026-10-09 | 100% |
| 48 | 1.6.7 | Autenticación, sesión y roles (US-42) | manual | 2d | 2026-10-09 | 2026-10-12 | 100% |
| 49 | 1.6.8 | Auditoría de intervenciones (US-15) | manual | 2d | 2026-10-12 | 2026-10-13 | 100% |
| 50 | 1.6.9 | Desembarco, paso a aduana y recepción (US-14, US-18) | manual | 2d | 2026-10-13 | 2026-10-14 | 100% |
| 51 | 1.6.10 | Liberación de Calidad y ajuste manual (US-47, US-40) | manual | 2d | 2026-10-14 | 2026-10-15 | 100% |
| 52 | 1.6.11 | Revisión y cierre del Sprint 5 con el supervisor | milestone, manual | 0d | 2026-10-16 | 2026-10-16 | 100% |

| ID | WBS | Task | Type | Duration | Start | Finish |
| --- | --- | --- | --- | --- | --- | --- |
| 53 | 1.7 | **Sprint 6 · Dashboard web y carga desde la interfaz** |  | 10d | 2026-10-19 | 2026-10-30 |
| 54 | 1.7.1 | Andamiaje del frontend y grilla de pedidos (TASK-05, US-19) | manual | 3d | 2026-10-19 | 2026-10-21 |
| 55 | 1.7.2 | Carga del Z-tracking desde la interfaz (US-58) | manual | 2d | 2026-10-21 | 2026-10-22 |
| 56 | 1.7.3 | Entrega del segundo informe de avance | milestone, manual | 0d | 2026-10-23 | 2026-10-23 |
| 57 | 1.7.4 | Detalle, filtros y cinta de KPIs (US-20, US-21, US-22) | manual | 4d | 2026-10-22 | 2026-10-27 |
| 58 | 1.7.5 | Semáforo, frescura, próximos arribos y bandeja (US-23, US-24, US-28, US-48) | manual | 2d | 2026-10-27 | 2026-10-28 |
| 59 | 1.7.6 | Vistas por rol, alta de embarques y saldo de créditos (US-43, US-55, US-57) | manual | 2d | 2026-10-29 | 2026-10-30 |
| 60 | 1.8 | **Sprint 7 · Mapas, historial y validación de la carga** |  | 10d | 2026-11-02 | 2026-11-13 |
| 61 | 1.8.1 | Mapa interactivo marítimo (US-25) | manual | 3d | 2026-11-02 | 2026-11-04 |
| 62 | 1.8.2 | Mapa interactivo aéreo (US-26) | manual | 2d | 2026-11-05 | 2026-11-06 |
| 63 | 1.8.3 | Información emergente y detalle con país de origen (US-27, US-44) | manual | 2d | 2026-11-09 | 2026-11-10 |
| 64 | 1.8.4 | Plantilla y validación de formato del Z-tracking (US-59) | manual | 2d | 2026-11-10 | 2026-11-11 |
| 65 | 1.8.5 | Historial, trayecto y transbordos (US-29, US-30) | manual | 2d | 2026-11-11 | 2026-11-12 |
| 66 | 1.8.6 | Pantalla de planta y retención del historial (US-33, TASK-10) | manual | 1d | 2026-11-13 | 2026-11-13 |
| 67 | 1.9 | **Cierre · Pruebas y documentación** |  | 5d | 2026-11-16 | 2026-11-21 |
| 68 | 1.9.1 | Pruebas de integración extremo a extremo (TASK-06) | manual | 3d | 2026-11-16 | 2026-11-18 |
| 69 | 1.9.2 | Manual de instalación y manual de usuario (TASK-07, TASK-08) | manual | 2d | 2026-11-18 | 2026-11-19 |
| 70 | 1.9.3 | Entrega del informe final | milestone, manual | 0d | 2026-11-20 | 2026-11-20 |
| 71 | 1.9.4 | Guía de despliegue para producción (TASK-09) | manual | 2d | 2026-11-19 | 2026-11-20 |
| 72 | 1.9.5 | Fin de la práctica y demostración funcional | milestone, manual | 0d | 2026-11-21 | 2026-11-21 |
| 73 | 1.10 | **Extensión opcional** |  | 10d | 2026-11-23 | 2026-12-04 |
| 74 | 1.10.1 | Correcciones derivadas de la validación con usuarios | manual | 5d | 2026-11-23 | 2026-11-27 |
| 75 | 1.10.2 | Traspaso técnico al Centro de Competencias | manual | 5d | 2026-11-30 | 2026-12-04 |
